# 13XS487-Technical

Schedule from MS Project XML, 2013-07-22 to 2014-10-01, A marks actual dates.

## Calendars

- Standard: Mon-Fri 08:00-12:00, 13:00-17:00; Sat-Sun off.

## Resources

| Resource |
| --- |
| Lantern Three Project Manager |
| Lantern Three Software Architect |
| NCI Documentation |
| NCI Project Officer |
| NCI Quality Assurance |
| NCI Systems |
| SAIC-F Technical Project Manager |

## Schedule

| ID | WBS | Task | Type | Duration | Start | Predecessors | Complete | Remaining | Actual finish | Total slack | Constraint | Resources | Work | Actual work |
| --- | --- | --- | --- | --- | --- | --- | --- | --- | --- | --- | --- | --- | --- | --- |
| 1 | 1 | Start | milestone | 0h | 2013-10-18 A |  | 100% |  | 2013-10-18 |  | start no earlier than 2013-10-18 |  |  |  |
| 2 | 2 | caGrid Operations & Maintenance |  | 240d | 2013-10-31 | 1 |  |  |  | 0d |  | Lantern Three Software Architect; Lantern Three Project Manager |  |  |
| 3 | 3 | caGrid Architectural Mentoring |  | 0h | 2013-10-31 | 1 |  |  |  | 0d |  |  |  |  |
| 4 | 4 | caGrid 2.0 Cookbook Development |  | 0h | 2013-10-31 | 1 |  |  |  | 0d |  |  |  |  |
| 5 | 5 | **caGrid 2.0 Deployment** |  | 0d | 2013-07-22 |  | 24% |  |  | 0d |  |  |  |  |
| 6 | 5.1 | Start | milestone | 0h | 2013-10-18 A | 1 | 100% |  | 2013-10-18 |  |  |  |  |  |
| 7 | 5.2 | Documentation |  | 3w | 2013-10-31 | 6 |  |  |  | 0d |  | Lantern Three Software Architect | 120h |  |
| 8 | 5.3 | **Deployment** |  | 0d | 2013-07-22 |  | 34% |  |  | 0d |  |  |  |  |
| 9 | 5.3.1 | Architecture Review Checklist |  | 4.75d | 2013-07-22 A | 6 | 100% |  | 2013-07-26 |  |  | Lantern Three Project Manager | 40h |  |
| 10 | 5.3.2 | Deployment to NCI QA |  | 4.75d | 2013-10-21 A | 9 | 100% |  | 2013-10-25 |  |  | NCI Systems | 40h |  |
| 11 | 5.3.3 | QA Testing |  | 3w | 2013-10-28 A | 10 | 25% | 2.25w |  | 0d |  |  | 120h | 30h |
| 12 | 5.3.4 | App Scan |  | 3d | 2013-11-18 | 11 |  |  |  | 0d |  |  |  |  |
| 13 | 5.3.5 | Deployment to NCI Stage |  | 1w | 2013-11-21 | 12 |  |  |  | 0d |  | NCI Systems | 40h |  |
| 14 | 5.3.6 | Deployment to NCI Production |  | 1w | 2013-11-28 | 13 |  |  |  | 0d |  | NCI Systems | 40h |  |
| 15 | 5.3.7 | End |  | 1d? | 2013-12-05 | 13, 9, 14, 10, 11 |  |  |  | 0d |  |  | 8h |  |
| 16 | 6 | End | milestone | 0h | 2014-10-01 | 15, 4, 2, 3 |  |  |  | 0d |  |  |  |  |
