# 13XS487-Technical

Schedule from MS Project, 2013-07-19 to 2014-09-30, A marks actual dates.
0

## Calendars

- Standard: Mon-Fri 08:00-12:00, 13:00-17:00; Sat-Sun off.

## Resources

| Resource |
| --- |
| Lantern Three Project Manager |
| Lantern Three Software Architect |
| NCI Documentation |
| NCI Project Officer |
| NCI Quality Assurance |
| NCI Systems |
| SAIC-F Technical Project Manager |
| Stephen Langella |
| Scott Oster |
| Shannon Hastings |
| ???? |
| All Architects |
| Prasad |
| Zhengwu |
| Zhengwu Lu |
| Prasad Konka |
| Zhengwu/Prasad |
| Security Team |
| Steve Langella |
| QA/System Team |
| QA |
| System Team |

## Schedule

| ID | WBS | Task | Type | Duration | Start | Finish | Predecessors | Complete | Remaining | Baseline start | Baseline finish | Baseline duration | Total slack | Free slack | Constraint | Resources | Work | Actual work |
| --- | --- | --- | --- | --- | --- | --- | --- | --- | --- | --- | --- | --- | --- | --- | --- | --- | --- | --- |
| 1 | 1 | Start | milestone | 0h | 2013-10-18 A | 2013-10-18 |  | 99% | 0h | 2013-10-18 | 2013-10-18 | 0h | 8d | 0d | start no earlier than 2013-10-18 |  |  |  |
| 2 | 2 | **caGrid Architectural Support** |  | 240d | 2013-10-18 A | 2014-09-18 | 1 |  | 240d | 2013-10-18 | 2014-09-18 | 240d | 8d |  |  |  | 3840h |  |
| 3 | 2.1 | caGrid Operations & Maintenance |  | 240d | 2013-10-18 A | 2014-09-18 | 1 |  | 240d | 2013-10-18 | 2014-09-18 | 240d | 8d |  |  | Lantern Three Software Architect; Lantern Three Project Manager | 3840h |  |
| 4 | 3 | **caGrid Project Management** |  | 248d? | 2013-10-18 | 2014-09-30 |  |  |  | 2013-10-18 | 2014-09-30 | 248d? | 0d |  |  |  | 4144h |  |
| 5 | 3.1 | caGrid Project Management | milestone | 0d? | 2013-10-18 | 2013-10-18 |  |  |  | 2013-10-18 | 2013-10-18 | 0d? | 0d |  | must start on 2013-10-18 |  |  |  |
| 6 | 3.2 | caGrid Project Management | milestone | 0d? | 2014-09-30 | 2014-09-30 |  |  |  | 2014-09-30 | 2014-09-30 | 0d? | 0d |  | must finish on 2014-09-30 |  |  |  |
| 7 | 3.3 | Weekly Status Meeting |  | 248d | 2013-10-18 | 2014-09-30 |  |  |  | 2013-10-18 | 2014-09-30 | 248d | 0d |  | finish no earlier than 2014-09-30 | Zhengwu Lu | 1984h |  |
| 8 | 3.4 | Monthly Status reports |  | 248d | 2013-10-18 | 2014-09-30 |  |  |  | 2013-10-18 | 2014-09-30 | 248d | 0d |  | start no earlier than 2013-10-18 | Prasad Konka | 1984h |  |
| 9 | 3.5 | Project Summary Report |  | 22d | 2014-09-01 | 2014-09-30 |  |  |  | 2014-09-01 | 2014-09-30 | 22d | 0d |  | finish no earlier than 2014-09-30 | Zhengwu/Prasad | 176h |  |
| 10 | 4 | **caGrid 2.0** |  | 186d? | 2013-07-19 A | 2014-04-04 |  | 63% | 69.71d? | 2013-07-19 | 2014-04-04 | 186d? | 127d |  |  |  | 3452h | 1300h |
| 11 | 4.1 | Start | milestone | 0h | 2013-10-18 A | 2013-10-18 | 1 | 99% | 0h | 2013-10-18 | 2013-10-18 | 0h | 248d |  |  |  |  |  |
| 12 | 4.2 | **Documentation** |  | 158d? | 2013-07-19 A | 2014-02-25 A |  | 100% |  | 2013-07-19 | 2014-02-25 | 158d? |  |  |  | Lantern Three Software Architect | 992h | 992h |
| 13 | 4.2.1 | Obtaining a SHA2 credential |  | 62d | 2013-07-22 A | 2013-10-15 A |  | 100% |  | 2013-07-22 | 2013-10-15 | 62d |  |  | finish no earlier than 2013-10-15 |  |  |  |
| 14 | 4.2.2 | Patching a caGrid 1.4 Distributions |  | 62d | 2013-07-22 A | 2013-10-15 A |  | 100% |  | 2013-07-22 | 2013-10-15 | 62d |  |  | finish no earlier than 2013-10-15 |  |  |  |
| 15 | 4.2.3 | Patching caGrid 1.x Services to Support SHA2 |  | 63d | 2013-07-19 A | 2013-10-15 A |  | 100% |  | 2013-07-19 | 2013-10-15 | 63d |  |  | finish no earlier than 2013-10-15 |  |  |  |
| 16 | 4.2.4 | Create a Trust Fabirc CA |  | 62d | 2013-07-22 A | 2013-10-15 A |  | 100% |  | 2013-07-22 | 2013-10-15 | 62d |  |  | finish no earlier than 2013-10-15 |  |  |  |
| 17 | 4.2.5 | **Administrator Guides** |  | 26d? | 2014-01-21 A | 2014-02-25 A |  | 100% |  | 2014-01-21 | 2014-02-25 | 26d? |  |  |  |  | 248h | 248h |
| 18 | 4.2.5.1 | Dorian |  | 5d | 2014-01-21 A | 2014-01-27 A |  | 100% |  | 2014-01-21 | 2014-01-27 | 5d |  |  | finish no earlier than 2014-01-27 | Stephen Langella | 40h | 40h |
| 19 | 4.2.5.2 | Grid Trust Service (GTS) |  | 5d | 2014-01-28 A | 2014-02-03 A | 18 | 100% |  | 2014-01-28 | 2014-02-03 | 5d |  |  | finish no earlier than 2014-02-03 | Stephen Langella | 40h | 40h |
| 20 | 4.2.5.3 | Global Model Exchange (GME) |  | 5d | 2014-01-28 A | 2014-02-03 A |  | 100% |  | 2014-01-28 | 2014-02-03 | 5d |  |  | finish no earlier than 2014-02-03 | Scott Oster | 40h | 40h |
| 21 | 4.2.5.4 | Support documentation on Wiki |  | 1d? | 2014-02-04 A | 2014-02-04 A | 20 | 100% |  | 2014-02-04 | 2014-02-04 | 1d? |  |  | start no earlier than 2014-01-28 | Stephen Langella | 8h | 8h |
| 22 | 4.2.5.5 | Grid Grouper |  | 10d | 2014-02-05 A | 2014-02-18 A | 19, 21 | 100% |  | 2014-02-05 | 2014-02-18 | 10d |  |  | finish no earlier than 2014-02-10 | Stephen Langella | 80h | 80h |
| 23 | 4.2.5.6 | Credential Delegation Service (CDS) |  | 5d | 2014-02-19 A | 2014-02-25 A | 22 | 100% |  | 2014-02-19 | 2014-02-25 | 5d |  |  |  | Scott Oster | 40h | 40h |
| 24 | 4.3 | **Deployment** |  | 120d | 2013-10-18 A | 2014-04-03 |  | 20% | 95.85d | 2013-10-18 | 2014-04-03 | 120d | 128d |  |  |  | 2444h | 308h |
| 25 | 4.3.1 | Architecture Review Checklist |  | 4.75d | 2013-10-28 A | 2013-11-01 A | 11 | 100% |  | 2013-10-28 | 2013-11-01 | 4.75d |  |  |  | Lantern Three Project Manager | 38h | 38h |
| 26 | 4.3.2 | Deployment to NCI QA |  | 19.75d | 2013-10-21 A | 2013-11-15 A | 11 | 100% |  | 2013-10-21 | 2013-11-15 | 19.75d |  |  |  | NCI Systems | 158h | 158h |
| 27 | 4.3.3 | Supporting QA Team |  | 70d | 2013-10-28 A | 2014-01-31 |  |  | 70d | 2013-10-28 | 2014-01-31 | 70d | 172d |  | start no earlier than 2013-10-28 |  |  |  |

Notes:
- 12: https://cagrid.org/display/caGrid20/Home

| ID | WBS | Task | Type | Duration | Start | Finish | Predecessors | Complete | Remaining | Baseline start | Baseline finish | Baseline duration | Total slack | Free slack | Constraint | Resources | Work | Actual work |
| --- | --- | --- | --- | --- | --- | --- | --- | --- | --- | --- | --- | --- | --- | --- | --- | --- | --- | --- |
| 28 | 4.3.4 | **QA Testing** |  | 43d | 2014-01-02 A | 2014-03-03 | 26 | 99% | 0d | 2014-01-02 | 2014-03-03 | 43d | 0d |  |  | NCI Quality Assurance | 384h | 56h |
| 29 | 4.3.4.1 | **Iteration 1** |  | 5d | 2014-01-02 A | 2014-01-08 A |  | 100% |  | 2014-01-02 | 2014-01-08 | 5d |  |  |  |  | 40h | 40h |
| 30 | 4.3.4.1.1 | QA App Scan |  | 5d | 2014-01-02 A | 2014-01-08 A |  | 100% |  | 2014-01-02 | 2014-01-08 | 5d |  |  | start no earlier than 2014-01-02 | NCI Systems | 40h | 40h |
| 31 | 4.3.4.2 | Iteration 2 |  | 5d | 2014-02-25 A | 2014-03-03 A | 29 | 100% |  | 2014-02-25 | 2014-03-03 | 5d |  |  | start no earlier than 2014-01-20 |  |  |  |
| 32 | 4.3.5 | **Training Grid** |  | 8d | 2013-10-18 A | 2013-10-29 A |  | 100% |  | 2013-10-18 | 2013-10-29 | 8d |  |  |  |  | 56h | 56h |
| 33 | 4.3.5.1 | **Iteration 1** |  | 8d | 2013-10-18 A | 2013-10-29 A |  | 100% |  | 2013-10-18 | 2013-10-29 | 8d |  |  |  |  | 56h | 56h |
| 34 | 4.3.5.1.1 | Start | milestone | 0d | 2013-10-18 A | 2013-10-18 A | 29 | 100% |  | 2013-10-18 | 2013-10-18 | 0d |  |  |  |  |  |  |
| 35 | 4.3.5.1.2 | Dorian |  | 1d | 2013-10-21 A | 2013-10-21 A | 34 | 100% |  | 2013-10-21 | 2013-10-21 | 1d |  |  |  | Lantern Three Software Architect | 8h | 8h |
| 36 | 4.3.5.1.3 | Master GTS |  | 1d | 2013-10-22 A | 2013-10-22 A | 34 | 100% |  | 2013-10-22 | 2013-10-22 | 1d |  |  |  | Lantern Three Software Architect | 8h | 8h |
| 37 | 4.3.5.1.4 | Slave GTS |  | 1d | 2013-10-23 A | 2013-10-23 A | 34 | 100% |  | 2013-10-23 | 2013-10-23 | 1d |  |  |  | Lantern Three Software Architect | 8h | 8h |
| 38 | 4.3.5.1.5 | Index |  | 1d | 2013-10-24 A | 2013-10-24 A | 34 | 100% |  | 2013-10-24 | 2013-10-24 | 1d |  |  |  | Lantern Three Software Architect | 8h | 8h |
| 39 | 4.3.5.1.6 | Grid Grouper |  | 1d | 2013-10-25 A | 2013-10-25 A | 34 | 100% |  | 2013-10-25 | 2013-10-25 | 1d |  |  |  | Lantern Three Software Architect | 8h | 8h |
| 40 | 4.3.5.1.7 | MMS |  | 1d | 2013-10-28 A | 2013-10-28 A | 34 | 100% |  | 2013-10-28 | 2013-10-28 | 1d |  |  |  | Lantern Three Software Architect | 8h | 8h |
| 41 | 4.3.5.1.8 | GME |  | 1d | 2013-10-29 A | 2013-10-29 A | 34 | 100% |  | 2013-10-29 | 2013-10-29 | 1d |  |  |  | Lantern Three Software Architect | 8h | 8h |
| 42 | 4.3.5.1.9 | End | milestone | 0d | 2013-10-29 A | 2013-10-29 A | 37, 38, 39, 35, 40, 36, 41 | 100% |  | 2013-10-29 | 2013-10-29 | 0d |  |  |  | Lantern Three Software Architect |  |  |
| 43 | 4.3.6 | QA report for stage deployment |  | 4d | 2014-03-04 A | 2014-03-07 | 31 | 75% | 1d | 2014-03-04 | 2014-03-07 | 4d | 127d | 0d | finish no earlier than 2014-02-07 |  |  |  |
| 44 | 4.3.7 | Deployment to NCI Stage |  | 5d | 2014-03-10 | 2014-03-14 | 43 |  |  | 2014-03-10 | 2014-03-14 | 5d | 127d | 0d |  | NCI Systems | 40h |  |
| 45 | 4.3.8 | Stage App Scan |  | 3d | 2014-03-17 | 2014-03-19 | 44 |  |  | 2014-03-17 | 2014-03-19 | 3d | 127d | 0d |  | Security Team | 24h |  |
| 46 | 4.3.9 | QA report for production deployment |  | 6d | 2014-03-20 | 2014-03-27 | 45 |  |  | 2014-03-20 | 2014-03-27 | 6d | 127d | 0d | finish no earlier than 2014-02-07 |  |  |  |
| 47 | 4.3.10 | Deployment to NCI Production |  | 5d | 2014-03-28 | 2014-04-03 | 46 |  |  | 2014-03-28 | 2014-04-03 | 5d | 127d | 0d |  | NCI Systems | 40h |  |
| 48 | 4.3.11 | Deployment Support |  | 21.3w | 2013-11-01 | 2014-04-01 | 25 |  |  | 2013-11-01 | 2014-04-01 | 21.3w | 130.75d |  | start no earlier than 2013-10-21 | Stephen Langella; Scott Oster | 1704h |  |
| 49 | 4.3.12 | Jenkins setup |  | 5d | 2014-02-21 A | 2014-02-27 A |  | 100% |  | 2014-02-21 | 2014-02-27 | 5d |  |  | start no earlier than 2014-02-21 |  |  |  |
| 50 | 4.4 | Release Support |  | 1d | 2014-04-04 | 2014-04-04 | 47 |  |  | 2014-04-04 | 2014-04-04 | 1d | 127d |  |  | Stephen Langella; Scott Oster | 16h |  |
| 51 | 4.5 | End | milestone | 0h | 2014-04-03 | 2014-04-03 | 26, 47, 25, 28 |  |  | 2014-04-03 | 2014-04-03 | 0h | 128d |  | start no earlier than 2014-02-20 |  |  |  |

Notes:
- 30: https://tracker.nci.nih.gov/browse/SECURITYTEAM-222

| ID | WBS | Task | Type | Duration | Start | Finish | Predecessors | Complete | Remaining | Baseline start | Baseline finish | Baseline duration | Total slack | Free slack | Constraint | Resources | Work | Actual work |
| --- | --- | --- | --- | --- | --- | --- | --- | --- | --- | --- | --- | --- | --- | --- | --- | --- | --- | --- |
| 52 | 5 | **caGrid 2.1** |  | 190d | 2013-12-30 A | 2014-09-19 |  | 20% | 151.6d | 2013-12-30 | 2014-09-19 | 190d | 7d |  |  |  | 5056h | 580.91h |
| 53 | 5.1 | Start | milestone | 0h | 2013-12-30 A | 2013-12-30 A |  | 100% |  | 2013-12-30 | 2013-12-30 | 0h |  |  |  |  |  |  |
| 54 | 5.2 | **Service Development** |  | 110d | 2013-12-30 A | 2014-05-30 |  | 48% | 57.25d | 2013-12-30 | 2014-05-30 | 110d | 73d |  |  |  | 1524h | 546.91h |
| 55 | 5.2.1 | Start | milestone | 0h | 2013-12-30 A | 2013-12-30 A | 53 | 100% |  | 2013-12-30 | 2013-12-30 | 0h |  |  |  |  |  |  |
| 56 | 5.2.2 | SyncGTS |  | 13.2w | 2013-12-30 A | 2014-03-31 | 55 | 65% | 4.62w | 2013-12-30 | 2014-03-31 | 13.2w | 117d | 44d | finish no earlier than 2014-03-31 | Stephen Langella | 84h | 59.71h |
| 57 | 5.2.3 | MMS Service |  | 12.8w | 2014-01-01 A | 2014-03-31 |  | 90% | 1.28w | 2014-01-01 | 2014-03-31 | 12.8w | 117d | 44d | finish no earlier than 2014-03-31 | Shannon Hastings | 512h | 460.8h |
| 58 | 5.2.4 | Index Service |  | 10w | 2014-03-24 | 2014-05-30 |  |  |  | 2014-02-11 | 2014-05-30 | 15.8w | 73d | 0d | start no earlier than 2014-03-24 | Scott Oster | 400h |  |
| 59 | 5.2.5 | Authentication Service |  | 6.6w | 2014-03-17 A | 2014-04-30 |  | 5% | 6.27w | 2014-03-17 | 2014-04-30 | 6.6w | 95d | 22d | finish no earlier than 2014-04-30 | Stephen Langella; Prasad Konka | 528h | 26.4h |
| 60 | 5.2.6 | End | milestone | 0h | 2014-05-30 | 2014-05-30 | 59, 57, 56, 58 |  |  | 2014-05-30 | 2014-05-30 | 0h | 73d | 0d |  |  |  |  |
| 61 | 5.3 | **Cookbooks** |  | 150d | 2014-02-24 A | 2014-09-19 |  | 7% | 140d | 2014-02-24 | 2014-09-19 | 150d | 7d |  |  |  | 880h |  |
| 62 | 5.3.1 | Define cookbook scope |  | 10d | 2014-02-24 A | 2014-03-07 A |  | 100% |  | 2014-02-24 | 2014-03-07 | 10d |  |  | start no earlier than 2014-02-24 |  |  |  |
| 63 | 5.3.2 | Developing Maven Archtypes project |  | 30d | 2014-03-10 | 2014-04-18 | 62 |  |  | 2014-03-10 | 2014-04-18 | 30d | 7d | 0d |  |  |  |  |
| 64 | 5.3.3 | How to develop a caGrid 2.0 analytical service |  | 50d | 2014-04-21 | 2014-06-27 | 63 |  |  | 2014-04-21 | 2014-06-27 | 50d | 7d | 0d |  | Prasad Konka | 400h |  |
| 65 | 5.3.4 | How to Develop a Secure caGrid 2.1 Service (Cookbook) |  | 30d | 2014-06-30 | 2014-08-08 | 64 |  |  | 2014-06-30 | 2014-08-08 | 30d | 7d | 0d | finish no earlier than 2014-07-31 | Prasad Konka | 240h |  |
| 66 | 5.3.5 | How to upgrade caGrid 1.4 analytical service to caGrid 2.0 analytical service |  | 30d | 2014-08-11 | 2014-09-19 | 65 |  |  | 2014-08-11 | 2014-09-19 | 30d | 7d |  |  | Prasad Konka | 240h |  |
| 67 | 5.4 | **Documentation** |  | 121d | 2014-03-10 A | 2014-08-25 |  | 4% | 116.33d | 2014-03-10 | 2014-08-25 | 121d | 26d |  |  |  | 1280h | 34h |
| 68 | 5.4.1 | Requirements Document |  | 5d | 2014-03-10 A | 2014-03-14 |  | 85% | 0.75d | 2014-03-10 | 2014-03-14 | 5d | 142d |  | start no earlier than 2014-03-10 | Stephen Langella | 40h | 34h |
| 69 | 5.4.2 | QA/System Installation/Upgrade Guide |  | 25d | 2014-06-17 | 2014-07-21 |  |  |  | 2014-06-17 | 2014-07-21 | 25d | 7d | 0d | start no earlier than 2014-06-17 | Scott Oster; Shannon Hastings; Stephen Langella | 600h |  |
| 70 | 5.4.3 | **Developer Guides** |  | 14d | 2014-06-02 | 2014-06-19 |  |  |  | 2014-06-02 | 2014-06-19 | 14d | 73d |  |  |  | 112h |  |
| 71 | 5.4.3.1 | Authentication Service |  | 14d | 2014-06-02 | 2014-06-19 | 60 |  |  | 2014-06-02 | 2014-06-19 | 14d | 73d |  | finish no earlier than 2013-08-20 | Prasad Konka | 112h |  |
| 72 | 5.4.4 | **Administrator Guides** |  | 25d | 2014-07-22 | 2014-08-25 | 69 |  |  | 2014-07-22 | 2014-08-25 | 25d | 26d |  |  |  | 528h |  |
| 73 | 5.4.4.1 | Dorian |  | 10d | 2014-07-22 | 2014-08-04 |  |  |  | 2014-07-22 | 2014-08-04 | 10d | 41d |  | finish no earlier than 2014-08-04 | Stephen Langella | 80h |  |
| 74 | 5.4.4.2 | Grid Trust Service (GTS) |  | 11d | 2014-08-04 | 2014-08-18 |  |  |  | 2014-08-04 | 2014-08-18 | 11d | 26d | 0d | finish no earlier than 2014-08-18 | Stephen Langella | 88h |  |
| 75 | 5.4.4.3 | Grid Grouper |  | 5d | 2014-08-19 | 2014-08-25 | 74 |  |  | 2014-08-19 | 2014-08-25 | 5d | 26d |  | start no earlier than 2014-08-19 | Stephen Langella | 40h |  |
| 76 | 5.4.4.4 | Credential Delegation Service (CDS) |  | 5d | 2014-07-22 | 2014-07-28 |  |  |  | 2014-07-22 | 2014-07-28 | 5d | 31d | 0d | finish no earlier than 2014-07-28 | Scott Oster | 40h |  |
| 77 | 5.4.4.5 | Global Model Exchange (GME) |  | 5d | 2014-07-29 | 2014-08-04 | 76 |  |  | 2014-07-29 | 2014-08-04 | 5d | 31d | 0d | finish no earlier than 2014-08-04 | Scott Oster | 40h |  |
| 78 | 5.4.4.6 | Index Service |  | 10d | 2014-08-05 | 2014-08-18 | 77 |  |  | 2014-08-05 | 2014-08-18 | 10d | 31d |  | start no earlier than 2014-08-05 | Scott Oster | 80h |  |
| 79 | 5.4.4.7 | Authentication Service |  | 10d | 2014-07-22 | 2014-08-04 |  |  |  | 2014-07-22 | 2014-08-04 | 10d | 31d | 0d | finish no earlier than 2014-08-04 | Shannon Hastings | 80h |  |
| 80 | 5.4.4.8 | MMS Service |  | 10d | 2014-08-05 | 2014-08-18 | 79 |  |  | 2014-08-05 | 2014-08-18 | 10d | 31d |  | start no earlier than 2014-08-05 | Shannon Hastings | 80h |  |

Notes:
- 67: https://cagrid.org/display/caGrid20/Home

| ID | WBS | Task | Type | Duration | Start | Finish | Predecessors | Baseline start | Baseline finish | Baseline duration | Total slack | Free slack | Constraint | Resources | Work |
| --- | --- | --- | --- | --- | --- | --- | --- | --- | --- | --- | --- | --- | --- | --- | --- |
| 81 | 5.5 | **Deployment** |  | 43d | 2014-07-22 | 2014-09-18 |  | 2014-07-22 | 2014-09-18 | 43d | 7d |  |  |  | 1372h |
| 82 | 5.5.1 | Architecture Review Checklist |  | 4d | 2014-07-22 | 2014-07-25 | 69 | 2014-07-22 | 2014-07-25 | 4d | 9d | 0d |  | Prasad Konka | 32h |
| 83 | 5.5.2 | Deployment to NCI QA |  | 1w | 2014-07-22 | 2014-07-28 | 69 | 2014-07-22 | 2014-07-28 | 1w | 7d | 0d |  | QA/System Team | 40h |
| 84 | 5.5.3 | Supporting QA Team |  | 2w | 2014-07-22 | 2014-08-04 | 69 | 2014-07-22 | 2014-08-04 | 2w | 41d |  |  | Stephen Langella; Scott Oster | 160h |
| 85 | 5.5.4 | **QA Testing** |  | 25d | 2014-07-29 | 2014-09-01 |  | 2014-07-29 | 2014-09-01 | 25d | 7d |  |  |  | 200h |
| 86 | 5.5.4.1 | Iteration 1 |  | 10d | 2014-07-29 | 2014-08-11 | 83 | 2014-07-29 | 2014-08-11 | 10d | 7d | 0d |  | QA | 80h |
| 87 | 5.5.4.2 | QA AppScan for iteration#1 |  | 5d | 2014-08-12 | 2014-08-18 | 86 | 2014-08-12 | 2014-08-18 | 5d | 7d | 0d |  | Security Team | 40h |
| 88 | 5.5.4.3 | Iteration 2 |  | 6d | 2014-08-19 | 2014-08-26 | 87 | 2014-08-19 | 2014-08-26 | 6d | 7d | 0d |  | QA | 48h |
| 89 | 5.5.4.4 | QA AppScan for iteration#2 |  | 4d | 2014-08-27 | 2014-09-01 | 88 | 2014-08-27 | 2014-09-01 | 4d | 7d | 0d |  | Security Team | 32h |
| 90 | 5.5.5 | **Training Grid** |  | 7d | 2014-08-18 | 2014-08-27 |  | 2014-08-18 | 2014-08-27 | 7d | 24d |  |  |  | 228h |
| 91 | 5.5.5.1 | **Iteration 1** |  | 7d | 2014-08-18 | 2014-08-27 |  | 2014-08-18 | 2014-08-27 | 7d | 24d |  |  |  | 228h |
| 92 | 5.5.5.1.1 | Start | milestone | 0d | 2014-08-18 | 2014-08-18 | 87 | 2014-08-18 | 2014-08-18 | 0d | 24d | 0d |  |  | 60h |
| 93 | 5.5.5.1.2 | Dorian |  | 1d | 2014-08-19 | 2014-08-19 | 92 | 2014-08-19 | 2014-08-19 | 1d | 24d | 0d |  | Stephen Langella; Scott Oster; Shannon Hastings | 24h |
| 94 | 5.5.5.1.3 | Master GTS |  | 1d | 2014-08-20 | 2014-08-20 | 93 | 2014-08-20 | 2014-08-20 | 1d | 24d | 0d |  | Stephen Langella; Scott Oster; Shannon Hastings | 24h |
| 95 | 5.5.5.1.4 | Slave GTS |  | 1d | 2014-08-21 | 2014-08-21 | 94 | 2014-08-21 | 2014-08-21 | 1d | 24d | 0d |  | Stephen Langella; Scott Oster; Shannon Hastings | 24h |
| 96 | 5.5.5.1.5 | Index |  | 1d | 2014-08-22 | 2014-08-22 | 95 | 2014-08-22 | 2014-08-22 | 1d | 24d | 0d |  | Stephen Langella; Scott Oster; Shannon Hastings | 24h |
| 97 | 5.5.5.1.6 | Grid Grouper |  | 1d | 2014-08-25 | 2014-08-25 | 96 | 2014-08-25 | 2014-08-25 | 1d | 24d | 0d |  | Stephen Langella; Scott Oster; Shannon Hastings | 24h |
| 98 | 5.5.5.1.7 | MMS |  | 1d | 2014-08-26 | 2014-08-26 | 97 | 2014-08-26 | 2014-08-26 | 1d | 24d | 0d |  | Stephen Langella; Scott Oster; Shannon Hastings | 24h |
| 99 | 5.5.5.1.8 | GME |  | 1d | 2014-08-27 | 2014-08-27 | 98 | 2014-08-27 | 2014-08-27 | 1d | 24d | 0d |  | Stephen Langella; Scott Oster; Shannon Hastings | 24h |
| 100 | 5.5.5.1.9 | End | milestone | 0d | 2014-08-27 | 2014-08-27 | 92, 93, 94, 95, 96, 97, 98, 99 | 2014-08-27 | 2014-08-27 | 0d | 24d |  |  |  |  |
| 101 | 5.5.6 | Deployment to NCI Stage |  | 5d | 2014-09-02 | 2014-09-08 | 89 | 2014-09-02 | 2014-09-08 | 5d | 7d | 0d |  | System Team | 40h |
| 102 | 5.5.7 | Stage App Scan |  | 3d | 2014-09-09 | 2014-09-11 | 101 | 2014-09-09 | 2014-09-11 | 3d | 7d | 0d |  | Security Team | 24h |
| 103 | 5.5.8 | Deployment to NCI Production |  | 5d | 2014-09-12 | 2014-09-18 | 102 | 2014-09-12 | 2014-09-18 | 5d | 7d | 0d |  | System Team | 40h |
| 104 | 5.5.9 | Deployment Support |  | 38d | 2014-07-28 | 2014-09-17 | 82 | 2014-07-28 | 2014-09-17 | 38d | 9d |  | finish no earlier than 2014-07-02 | Stephen Langella; Scott Oster | 608h |
| 105 | 5.6 | Release Support |  | 1d | 2014-09-19 | 2014-09-19 | 103 | 2014-09-19 | 2014-09-19 | 1d | 7d | 0d |  |  |  |
| 106 | 5.7 | End | milestone | 0h | 2014-09-19 | 2014-09-19 | 105 | 2014-09-19 | 2014-09-19 | 0h | 7d |  |  |  |  |

| ID | WBS | Task | Type | Duration | Start | Finish | Predecessors | Complete | Remaining | Baseline start | Baseline finish | Baseline duration | Total slack | Free slack | Constraint | Resources | Work | Actual work |
| --- | --- | --- | --- | --- | --- | --- | --- | --- | --- | --- | --- | --- | --- | --- | --- | --- | --- | --- |
| 107 | 6 | **caGrid Portal** |  | 96d | 2014-02-03 A | 2014-06-16 |  | 4% | 91.83d | 2014-02-03 | 2014-06-16 | 96d | 76d |  |  |  | 920h | 40h |
| 108 | 6.1 | Start | milestone | 0d | 2014-02-03 | 2014-02-03 |  |  |  | 2014-02-03 | 2014-02-03 | 0d | 172d |  | start no earlier than 2014-02-03 |  |  |  |
| 109 | 6.2 | **Portal Development** |  | 45d | 2014-03-03 A | 2014-05-02 |  | 11% | 40d | 2014-03-03 | 2014-05-02 | 45d | 76d |  |  |  | 360h | 40h |
| 110 | 6.2.1 | Start | milestone | 0d | 2014-03-03 | 2014-03-03 |  |  |  | 2014-03-03 | 2014-03-03 | 0d | 81d | 0d | start no earlier than 2014-03-03 |  |  |  |
| 111 | 6.2.2 | Requirements Document |  | 10d | 2014-03-03 A | 2014-03-14 | 110 | 50% | 5d | 2014-03-03 | 2014-03-14 | 10d | 76d | 0d |  | Prasad Konka | 80h | 40h |
| 112 | 6.2.3 | caGrid Portal Framework setup |  | 10d | 2014-03-17 | 2014-03-28 | 111 |  |  | 2014-03-17 | 2014-03-28 | 10d | 76d | 0d |  | Prasad Konka | 80h |  |
| 113 | 6.2.4 | Account Registration/Management |  | 20d | 2014-03-31 | 2014-04-25 | 112 |  |  | 2014-03-31 | 2014-04-25 | 20d | 76d | 0d |  | Prasad Konka | 160h |  |
| 114 | 6.2.5 | Unit Testing |  | 5d | 2014-04-28 | 2014-05-02 | 113 |  |  | 2014-04-28 | 2014-05-02 | 5d | 76d | 0d |  | Prasad Konka | 40h |  |
| 115 | 6.2.6 | End | milestone | 0d | 2014-05-02 | 2014-05-02 | 114 |  |  | 2014-05-02 | 2014-05-02 | 0d | 76d | 0d |  |  |  |  |
| 116 | 6.3 | **Documentation** |  | 5d | 2014-05-05 | 2014-05-09 |  |  |  | 2014-05-05 | 2014-05-09 | 5d | 102d |  |  |  | 40h |  |
| 117 | 6.3.1 | User Guide |  | 5d | 2014-05-05 | 2014-05-09 | 115 |  |  | 2014-05-05 | 2014-05-09 | 5d | 102d |  |  | Prasad Konka | 40h |  |
| 118 | 6.4 | **Deployment** |  | 31d | 2014-05-05 | 2014-06-16 |  |  |  | 2014-05-05 | 2014-06-16 | 31d | 76d |  |  |  | 512h |  |
| 119 | 6.4.1 | Architecture Review Checklist |  | 1d | 2014-05-05 | 2014-05-05 | 115 |  |  | 2014-05-05 | 2014-05-05 | 1d | 76d | 0d |  | Prasad Konka | 8h |  |
| 120 | 6.4.2 | Deployment to NCI QA |  | 5d | 2014-05-06 | 2014-05-12 | 119 |  |  | 2014-05-06 | 2014-05-12 | 5d | 77d | 0d |  | QA/System Team | 40h |  |
| 121 | 6.4.3 | Supporting QA Team |  | 5d | 2014-05-06 | 2014-05-12 | 119 |  |  | 2014-05-06 | 2014-05-12 | 5d | 101d |  |  | Prasad Konka | 40h |  |
| 122 | 6.4.4 | **QA Testing** |  | 3d | 2014-05-13 | 2014-05-15 |  |  |  | 2014-05-13 | 2014-05-15 | 3d | 77d |  |  |  | 24h |  |
| 123 | 6.4.4.1 | Iteration 1 |  | 3d | 2014-05-13 | 2014-05-15 | 120 |  |  | 2014-05-13 | 2014-05-15 | 3d | 77d | 0d |  | QA | 24h |  |
| 124 | 6.4.5 | QA App Scan |  | 5d | 2014-05-16 | 2014-05-22 | 123 |  |  | 2014-05-16 | 2014-05-22 | 5d | 77d | 0d |  | Security Team | 40h |  |
| 125 | 6.4.6 | Deployment to NCI Stage |  | 5d | 2014-05-23 | 2014-05-29 | 124 |  |  | 2014-05-23 | 2014-05-29 | 5d | 77d | 0d |  | System Team | 40h |  |
| 126 | 6.4.7 | Stage App Scan |  | 5d | 2014-05-30 | 2014-06-05 | 125 |  |  | 2014-05-30 | 2014-06-05 | 5d | 77d | 0d |  | Security Team | 40h |  |
| 127 | 6.4.8 | Deployment to NCI Production |  | 5d | 2014-06-06 | 2014-06-12 | 126 |  |  | 2014-06-06 | 2014-06-12 | 5d | 77d | 0d |  | System Team | 40h |  |
| 128 | 6.4.9 | Deployment Support |  | 30d | 2014-05-06 | 2014-06-16 | 119 |  |  | 2014-05-06 | 2014-06-16 | 30d | 76d |  | start no earlier than 2014-02-26 | Prasad Konka | 240h |  |
| 129 | 6.5 | Release Support |  | 1d | 2014-06-13 | 2014-06-13 | 127 |  |  | 2014-06-13 | 2014-06-13 | 1d | 77d | 0d |  | Prasad Konka | 8h |  |
| 130 | 6.6 | End | milestone | 0d | 2014-06-13 | 2014-06-13 | 129 |  |  | 2014-06-13 | 2014-06-13 | 0d | 77d |  |  |  |  |  |
| 131 | 7 | End | milestone | 0d | 2014-09-30 | 2014-09-30 |  |  |  | 2014-09-30 | 2014-09-30 | 0d | 1d |  | start no earlier than 2014-09-30 |  |  |  |
