# OSU_caGrid_1.0

Schedule from MS Project, 2005-12-01 to 2006-10-23, status date 2006-01-03, A marks actual dates.
Ohio State University

## Calendars

- Standard: Mon-Fri 08:00-12:00, 13:00-17:00; Sat-Sun off. Exceptions (off unless hours are given): 2005-12-26 to 2005-12-30.

## Resources

| Resource |
| --- |
| Scott Oster |
| Shannon Hastings |
| Steve Langella |
| Tahsin Kurc |
| Joel Saltz |

## Schedule

| ID | WBS | Task | Duration | Start | Finish | Predecessors | Complete | Remaining | Baseline start | Baseline finish | Baseline duration | Total slack | Resources | Work | Actual work |
| --- | --- | --- | --- | --- | --- | --- | --- | --- | --- | --- | --- | --- | --- | --- | --- |
| 1 | 1 | **caGrid 1.0** | 228d? | 2005-12-01 A | 2006-10-23 |  | 42% | 131.19d? | 2005-12-01 | 2006-08-01 | 169d? | 0d |  | 1360h | 771.38h |
| 2 | 1.1 | **Inception** | 40d? | 2005-12-01 A | 2006-02-01 |  | 82% | 7.27d? | 2005-12-01 | 2006-02-01 | 40d? | 188d |  |  |  |
| 3 | 1.1.1 | caGrid 0.5 Evaluation/Post Mortem | 3d? | 2005-12-01 A | 2005-12-05 A |  | 100% |  | 2005-12-01 | 2005-12-05 | 3d? |  |  |  |  |
| 4 | 1.1.2 | Publish caGrid 0.5 Paper | 40d | 2005-12-01 A | 2006-02-01 |  | 80% | 8d | 2005-12-01 | 2006-02-01 | 40d | 188d |  |  |  |
| 5 | 1.1.3 | Use Case Solicitation | 1d | 2005-12-01 A | 2005-12-01 A |  | 100% |  | 2005-12-01 | 2005-12-01 | 1d |  |  |  |  |
| 6 | 1.2 | **Baseline Infrastructure Development** | 6d? | 2005-12-01 A | 2005-12-08 A |  | 100% |  | 2005-12-01 | 2005-12-08 | 6d? |  | Scott Oster; Shannon Hastings; Steve Langella | 144h | 144h |
| 7 | 1.2.1 | Project Layout/ Build process | 3d | 2005-12-01 A | 2005-12-05 A |  | 100% |  | 2005-12-01 | 2005-12-05 | 3d |  |  |  |  |
| 8 | 1.2.2 | Testing Plan/Process | 3d | 2005-12-06 A | 2005-12-08 A | 7 | 100% |  | 2005-12-06 | 2005-12-08 | 3d |  |  |  |  |
| 9 | 1.2.3 | Technology Stack Evaluation | 5d? | 2005-12-01 A | 2005-12-07 A |  | 100% |  | 2005-12-01 | 2005-12-07 | 5d? |  |  |  |  |
| 10 | 1.3 | **Migration of Known Components** | 5d? | 2005-12-06 A | 2005-12-12 A |  | 100% |  | 2005-12-06 | 2005-12-12 | 5d? |  | Scott Oster; Shannon Hastings; Steve Langella | 120h | 120h |
| 11 | 1.3.1 | **Baseline Technology Migration** | 5d? | 2005-12-06 A | 2005-12-12 A | 7 | 100% |  | 2005-12-06 | 2005-12-12 | 5d? |  |  |  |  |
| 12 | 1.3.1.1 | Metadata Beans | 1d? | 2005-12-06 A | 2005-12-06 A |  | 100% |  | 2005-12-06 | 2005-12-06 | 1d? |  |  |  |  |
| 13 | 1.3.1.2 | Base Introduce | 5d | 2005-12-06 A | 2005-12-12 A |  | 100% |  | 2005-12-06 | 2005-12-12 | 5d |  |  |  |  |
| 14 | 1.3.1.3 | Index Service / MDS Components | 5d | 2005-12-06 A | 2005-12-12 A |  | 100% |  | 2005-12-06 | 2005-12-12 | 5d |  |  |  |  |
| 15 | 1.3.1.4 | GME | 5d | 2005-12-06 A | 2005-12-12 A |  | 100% |  | 2005-12-06 | 2005-12-12 | 5d |  |  |  |  |
| 16 | 1.4 | **Initial Iteration** | 27d? | 2005-12-01 A | 2006-01-13 |  | 95% | 1.39d? | 2005-12-01 | 2006-01-13 | 27d? | 0d |  | 400h | 392.79h |
| 17 | 1.4.1 | Master Project Plan Review | 1d? | 2005-12-01 | 2005-12-01 |  |  |  | 2005-12-01 | 2005-12-01 | 1d? | 38d |  |  |  |
| 18 | 1.4.2 | **Initial Federated Identity Management Solution** | 27d? | 2005-12-01 A | 2006-01-13 A |  | 100% |  | 2005-12-01 | 2006-01-13 | 27d? |  | Steve Langella | 216h | 216h |
| 19 | 1.4.2.1 | Evaluate Recommendations from Security Whitepaper | 2d? | 2005-12-01 A | 2005-12-02 A |  | 100% |  | 2005-12-01 | 2005-12-02 | 2d? |  |  |  |  |
| 20 | 1.4.2.2 | Investigate Options for Certificate Creation | 5d | 2005-12-01 A | 2005-12-07 A |  | 100% |  | 2005-12-01 | 2005-12-07 | 5d |  |  |  |  |
| 21 | 1.4.2.3 | Design Separation of Identity Assertion from Credential Creation in GUMS | 5d | 2005-12-01 A | 2005-12-07 A |  | 100% |  | 2005-12-01 | 2005-12-07 | 5d |  |  |  |  |
| 22 | 1.4.2.4 | Prototype SimpleCA replacement | 5d | 2005-12-08 A | 2005-12-14 A | 20 | 100% |  | 2005-12-08 | 2005-12-14 | 5d |  |  |  |  |
| 23 | 1.4.2.5 | Prototype Credential Creation Component | 5d | 2005-12-15 A | 2005-12-21 A | 22 | 100% |  | 2005-12-15 | 2005-12-21 | 5d |  |  |  |  |
| 24 | 1.4.2.6 | Prototype Simple Identity Provider Component | 2d | 2005-12-22 A | 2005-12-23 A | 23 | 100% |  | 2005-12-22 | 2005-12-23 | 2d |  |  |  |  |
| 25 | 1.4.2.7 | Prototype Identity Federation Service | 5d? | 2006-01-02 A | 2006-01-06 A | 24 | 100% |  | 2006-01-02 | 2006-01-06 | 5d? |  |  |  |  |
| 26 | 1.4.2.8 | Prototype Graphical Identity Management Client | 5d | 2006-01-09 A | 2006-01-13 A | 25 | 100% |  | 2006-01-09 | 2006-01-13 | 5d |  |  |  |  |
| 27 | 1.4.2.9 | Unit Testing | 5d | 2005-12-01 A | 2005-12-07 A |  | 100% |  | 2005-12-01 | 2005-12-07 | 5d |  |  |  |  |

| ID | WBS | Task | Duration | Start | Finish | Predecessors | Complete | Remaining | Baseline start | Baseline finish | Baseline duration | Total slack | Free slack | Resources | Work | Actual work |
| --- | --- | --- | --- | --- | --- | --- | --- | --- | --- | --- | --- | --- | --- | --- | --- | --- |
| 28 | 1.4.3 | **Initial Introduce Toolkit** | 3d? | 2005-12-01 A | 2005-12-05 |  | 84% | 0.48d? | 2005-12-01 | 2005-12-05 | 3d? | 24d |  | Shannon Hastings | 24h | 20.12h |
| 29 | 1.4.3.1 | Gap analysis | 1d? | 2005-12-01 A | 2005-12-01 A |  | 100% |  | 2005-12-01 | 2005-12-01 | 1d? |  |  |  |  |  |
| 30 | 1.4.3.2 | Generalization to Support Other Service Types | 3d? | 2005-12-01 A | 2005-12-05 |  | 67% | 1d? | 2005-12-01 | 2005-12-05 | 3d? | 36d |  |  |  |  |
| 31 | 1.4.3.3 | Add Support for Faults/Exceptions | 3d | 2005-12-01 A | 2005-12-05 A |  | 100% |  | 2005-12-01 | 2005-12-05 | 3d |  |  |  |  |  |
| 32 | 1.4.3.4 | Investigation of Tmplate Engines for Code Generation | 1d? | 2005-12-01 A | 2005-12-01 A |  | 100% |  | 2005-12-01 | 2005-12-01 | 1d? |  |  |  |  |  |
| 33 | 1.4.3.5 | Migrate Code Generation to Template Engine | 1d? | 2005-12-01 A | 2005-12-01 A |  | 100% |  | 2005-12-01 | 2005-12-01 | 1d? |  |  |  |  |  |
| 34 | 1.4.3.6 | Add Backup / Restore support | 1d? | 2005-12-01 A | 2005-12-01 |  | 90% | 0.1d? | 2005-12-01 | 2005-12-01 | 1d? | 38d |  |  |  |  |
| 35 | 1.4.3.7 | Basic Service Creation System Testing | 3d? | 2005-12-01 A | 2005-12-05 |  | 67% | 1d? | 2005-12-01 | 2005-12-05 | 3d? | 36d |  |  |  |  |
| 36 | 1.4.4 | **Initial Metadata Framework** | 10d? | 2005-12-01 A | 2005-12-14 |  | 96% | 0.42d? | 2005-12-01 | 2005-12-14 | 10d? | 17d |  | Scott Oster | 80h | 76.67h |
| 37 | 1.4.4.1 | Installation and Deployment of Testbed Index Service | 2d? | 2005-12-01 A | 2005-12-02 |  | 75% | 0.5d? | 2005-12-01 | 2005-12-02 | 2d? | 37d |  |  |  |  |
| 38 | 1.4.4.2 | Design Integration of Service Metadata using Resource Framework | 5d? | 2005-12-01 A | 2005-12-07 A |  | 100% |  | 2005-12-01 | 2005-12-07 | 5d? |  |  |  |  |  |
| 39 | 1.4.4.3 | Develop Baseline Service Integration for Common Metadata | 5d | 2005-12-08 A | 2005-12-14 A | 38 | 100% |  | 2005-12-08 | 2005-12-14 | 5d |  |  |  |  |  |
| 40 | 1.4.5 | **Deployment / Installation** | 5d? | 2005-12-01 A | 2005-12-07 A |  | 100% |  | 2005-12-01 | 2005-12-07 | 5d? |  |  | Scott Oster; Shannon Hastings | 80h | 80h |
| 41 | 1.4.5.1 | Simple Command Line Deployment | 5d? | 2005-12-01 A | 2005-12-07 A |  | 100% |  | 2005-12-01 | 2005-12-07 | 5d? |  |  |  |  |  |
| 42 | 1.5 | **Second Iteration (prior to Annual Meeting)** | 56d? | 2006-01-16 A | 2006-04-03 | 16 | 21% | 44.42d? | 2006-02-01 | 2006-04-03 | 44d? | 0d |  |  | 696h | 114.6h |
| 43 | 1.5.1 | **Infrastructure** | 15d? | 2006-01-16 A | 2006-02-03 |  | 50% | 7.5d? | 2006-02-01 | 2006-02-07 | 5d? | 41d |  | Scott Oster | 24h | 12h |
| 44 | 1.5.1.1 | **Manage Intra-Project Artifact Dependencies** | 3d? | 2006-02-01 A | 2006-02-03 A |  | 100% |  | 2006-02-01 | 2006-02-03 | 3d? |  |  |  |  |  |
| 45 | 1.5.1.1.1 | Define Dependencies | 1d? | 2006-02-01 A | 2006-02-01 A |  | 100% |  | 2006-02-01 | 2006-02-01 | 1d? |  |  |  |  |  |
| 46 | 1.5.1.1.2 | Develop Custom Ant Task to Copy Dependant Artifacts | 3d? | 2006-02-01 A | 2006-02-03 A |  | 100% |  | 2006-02-01 | 2006-02-03 | 3d? |  |  |  |  |  |
| 47 | 1.5.1.1.3 | Integrate into Main Build Process | 1d? | 2006-02-01 A | 2006-02-01 A |  | 100% |  | 2006-02-01 | 2006-02-01 | 1d? |  |  |  |  |  |
| 48 | 1.5.1.2 | Initial Release Process | 5d? | 2006-01-16 | 2006-01-20 |  |  |  | 2006-02-01 | 2006-02-07 | 5d? | 51d |  |  |  |  |
| 49 | 1.5.2 | **Federated Identity Management Solution** | 56d? | 2006-01-16 A | 2006-04-03 |  | 19% | 45.64d? | 2006-02-01 | 2006-04-03 | 44d? | 0d |  | Steve Langella | 352h | 65.12h |
| 50 | 1.5.2.1 | Service Usage Logging Support | 3d? | 2006-01-16 | 2006-01-18 |  |  |  | 2006-02-01 | 2006-02-03 | 3d? | 51d | 0d |  |  |  |
| 51 | 1.5.2.2 | GUI Support for usage information | 2d? | 2006-01-19 | 2006-01-20 | 50 |  |  | 2006-02-06 | 2006-02-07 | 2d? | 51d |  |  |  |  |
| 52 | 1.5.2.3 | User Event Notification | 1d? | 2006-01-16 | 2006-01-16 |  |  |  | 2006-02-01 | 2006-02-01 | 1d? | 55d |  |  |  |  |
| 53 | 1.5.2.4 | Initial Installation and Users Guide | 5d? | 2006-02-01 A | 2006-02-07 |  | 20% | 4d? | 2006-02-01 | 2006-02-07 | 5d? | 0d |  |  |  |  |

| ID | WBS | Task | Type | Duration | Start | Finish | Predecessors | Complete | Remaining | Baseline start | Baseline finish | Baseline duration | Total slack | Free slack | Constraint | Resources | Work | Actual work |
| --- | --- | --- | --- | --- | --- | --- | --- | --- | --- | --- | --- | --- | --- | --- | --- | --- | --- | --- |
| 54 | 1.5.2.5 | **Integration with Existing Institutional IdP** |  | 5d? | 2006-02-08 A | 2006-02-14 | 53 | 34% | 3.31d? |  |  |  | 34d |  |  |  |  |  |
| 55 | 1.5.2.5.1 | OSU |  | 3d | 2006-02-08 A | 2006-02-10 |  | 90% | 0.3d |  |  |  | 35d |  |  |  |  |  |
| 56 | 1.5.2.5.2 | Other? (maybe Georgetown) |  | 5d? | 2006-02-08 | 2006-02-14 |  |  |  |  |  |  | 34d |  |  |  |  |  |
| 57 | 1.5.2.6 | Initial Community Adoption and Testing | milestone | 1d? | 2006-04-03 | 2006-04-03 | 55 |  |  | 2006-04-03 | 2006-04-03 | 1d? | 0d |  | start no earlier than 2006-04-03 |  |  |  |
| 58 | 1.5.3 | **Federated Authorization Solution** |  | 19d? | 2006-01-16 | 2006-02-09 |  |  |  | 2006-02-01 | 2006-02-27 | 19d? | 37d |  |  | Steve Langella | 152h |  |
| 59 | 1.5.3.1 | Review and Analyze Community use cases |  | 1d? | 2006-01-16 | 2006-01-16 |  |  |  | 2006-02-01 | 2006-02-01 | 1d? | 37d | 0d |  |  |  |  |
| 60 | 1.5.3.2 | Investigate Attribute-based Authorization Solutions |  | 8d? | 2006-01-17 | 2006-01-26 | 59 |  |  | 2006-02-02 | 2006-02-13 | 8d? | 37d | 0d |  |  |  |  |
| 61 | 1.5.3.3 | Investigate Globus Authz Framework |  | 5d? | 2006-01-27 | 2006-02-02 | 60 |  |  | 2006-02-14 | 2006-02-20 | 5d? | 37d | 0d |  |  |  |  |
| 62 | 1.5.3.4 | Design Authorization Solution |  | 5d? | 2006-02-03 | 2006-02-09 | 61 |  |  | 2006-02-21 | 2006-02-27 | 5d? | 37d |  |  |  |  |  |
| 63 | 1.5.4 | **Solution for Service Credentials** |  | 5d | 2006-01-16 | 2006-01-20 |  |  |  | 2006-02-01 | 2006-02-07 | 5d | 51d |  |  |  |  |  |
| 64 | 1.5.4.1 | Analyze Use Cases |  | 2d | 2006-01-16 | 2006-01-17 |  |  |  | 2006-02-01 | 2006-02-02 | 2d | 54d |  |  |  |  |  |
| 65 | 1.5.4.2 | Investigate options |  | 2d | 2006-01-16 | 2006-01-17 |  |  |  | 2006-02-01 | 2006-02-02 | 2d | 54d |  |  |  |  |  |
| 66 | 1.5.4.3 | Design Solution |  | 5d | 2006-01-16 | 2006-01-20 |  |  |  | 2006-02-01 | 2006-02-07 | 5d | 51d |  |  |  |  |  |
| 67 | 1.5.5 | **Solution for Managing Trust** |  | 5d | 2006-01-16 | 2006-01-20 |  |  |  | 2006-02-01 | 2006-02-07 | 5d | 51d |  |  |  |  |  |
| 68 | 1.5.5.1 | Analyze Use Cases |  | 2d | 2006-01-16 | 2006-01-17 |  |  |  | 2006-02-01 | 2006-02-02 | 2d | 54d |  |  |  |  |  |
| 69 | 1.5.5.2 | Investigate options |  | 5d | 2006-01-16 | 2006-01-20 |  |  |  | 2006-02-01 | 2006-02-07 | 5d | 51d |  |  |  |  |  |
| 70 | 1.5.5.3 | Design Solution |  | 5d | 2006-01-16 | 2006-01-20 |  |  |  | 2006-02-01 | 2006-02-07 | 5d | 51d |  |  |  |  |  |
| 71 | 1.5.6 | **Introduce Toolkit** |  | 17d? | 2006-01-16 A | 2006-02-07 |  | 59% | 7.02d? | 2006-02-01 | 2006-02-07 | 5d? | 39d |  |  | Shannon Hastings | 40h | 23.48h |
| 72 | 1.5.6.1 | Extract Generated Classnames directly from Axis |  | 4d | 2006-02-01 A | 2006-02-06 A |  | 100% |  | 2006-02-01 | 2006-02-06 | 4d |  |  |  |  |  |  |
| 73 | 1.5.6.2 | **Generalize to Support Multiple Service Types** |  | 2d? | 2006-01-16 A | 2006-01-17 |  | 30% | 1.4d? | 2006-02-01 | 2006-02-02 | 2d? | 54d |  |  |  |  |  |
| 74 | 1.5.6.2.1 | Add service template concept |  | 2d | 2006-01-16 A | 2006-01-17 |  | 75% | 0.5d |  |  |  | 54d |  |  |  |  |  |
| 75 | 1.5.6.2.2 | Create Analytical Serivce Template |  | 1d | 2006-01-16 | 2006-01-16 |  |  |  |  |  |  | 55d |  |  |  |  |  |
| 76 | 1.5.6.2.3 | Create Data Serivce Template |  | 2d? | 2006-01-16 | 2006-01-17 |  |  |  |  |  |  | 54d |  |  |  |  |  |
| 77 | 1.5.6.3 | Simple Security Configuration |  | 3d? | 2006-01-16 | 2006-01-18 |  |  |  |  |  |  | 53d |  |  |  |  |  |
| 78 | 1.5.6.4 | Simple Deployment Support with Parameter Substitution |  | 2d? | 2006-02-01 A | 2006-02-02 |  | 50% | 1d? | 2006-02-01 | 2006-02-02 | 2d? | 42d |  |  |  |  |  |

| ID | WBS | Task | Duration | Start | Finish | Predecessors | Complete | Remaining | Baseline start | Baseline finish | Baseline duration | Total slack | Free slack | Resources | Work | Actual work |
| --- | --- | --- | --- | --- | --- | --- | --- | --- | --- | --- | --- | --- | --- | --- | --- | --- |
| 79 | 1.5.6.5 | **Generalize Metadata Integration** | 5d | 2006-02-01 A | 2006-02-07 |  | 78% | 1.11d | 2006-02-01 | 2006-02-07 | 5d | 39d |  |  |  |  |
| 80 | 1.5.6.5.1 | Discover Types from GME | 2d | 2006-02-01 A | 2006-02-02 A |  | 100% |  | 2006-02-01 | 2006-02-02 | 2d |  |  |  |  |  |
| 81 | 1.5.6.5.2 | Selection of which Types to Register | 2d | 2006-02-01 A | 2006-02-02 A |  | 100% |  | 2006-02-01 | 2006-02-02 | 2d |  |  |  |  |  |
| 82 | 1.5.6.5.3 | Code Generation to Support Arbitrary Types | 5d | 2006-02-01 A | 2006-02-07 |  | 60% | 2d | 2006-02-01 | 2006-02-07 | 5d | 39d |  |  |  |  |
| 83 | 1.5.7 | **Analytical Services** | 4d | 2006-01-16 | 2006-01-19 |  |  |  | 2006-02-01 | 2006-02-07 | 5d | 52d |  | Shannon Hastings | 32h |  |
| 84 | 1.5.7.1 | Secure Client API | 4d | 2006-01-16 | 2006-01-19 |  |  |  |  |  |  | 52d |  |  |  |  |
| 85 | 1.5.8 | **Metadata Framework** | 19d? | 2006-01-16 A | 2006-02-09 |  | 25% | 14.25d? | 2006-02-01 | 2006-02-09 | 7d? | 37d |  | Scott Oster | 56h | 14h |
| 86 | 1.5.8.1 | Basic Discovery API | 4d? | 2006-01-16 | 2006-01-19 |  |  |  |  |  |  | 52d |  |  |  |  |
| 87 | 1.5.8.2 | Investigation of LexBIG Integration Requirements | 3d? | 2006-01-16 | 2006-01-18 |  |  |  | 2006-02-01 | 2006-02-03 | 3d? | 53d |  |  |  |  |
| 88 | 1.5.8.3 | Baseline caDSR Grid Service | 7d? | 2006-02-01 A | 2006-02-09 |  | 25% | 5.25d? | 2006-02-01 | 2006-02-09 | 7d? | 37d |  |  |  |  |
| 89 | 1.5.8.4 | Type Agnostic Resource Framework for Service Metadata | 5d | 2006-01-16 A | 2006-01-20 |  | 75% | 1.25d | 2006-02-01 | 2006-02-07 | 5d | 51d |  |  |  |  |
| 90 | 1.5.8.5 | Investigation of Polling versus Notification for Metadata | 3d? | 2006-01-16 | 2006-01-18 |  |  |  | 2006-02-01 | 2006-02-03 | 3d? | 53d |  |  |  |  |
| 91 | 1.5.9 | **Deployment / Installation** | 5d? | 2006-01-16 | 2006-01-20 |  |  |  | 2006-02-01 | 2006-02-07 | 5d? | 51d |  | Scott Oster | 40h |  |
| 92 | 1.5.9.1 | Design Installation/Deployment Process | 5d? | 2006-01-16 | 2006-01-20 |  |  |  | 2006-02-01 | 2006-02-07 | 5d? | 51d |  |  |  |  |
| 93 | 1.5.9.2 | Prototype Base Installer | 5d? | 2006-01-16 | 2006-01-20 |  |  |  | 2006-02-01 | 2006-02-07 | 5d? | 51d |  |  |  |  |
| 94 | 1.5.9.3 | Prototype Deployment Infrastructure | 5d? | 2006-01-16 | 2006-01-20 |  |  |  | 2006-02-01 | 2006-02-07 | 5d? | 51d |  |  |  |  |
| 95 | 1.6 | **Thrid Iteration (prior to Beta)** | 14d? | 2006-04-04 | 2006-04-21 | 42 |  |  | 2006-05-01 | 2006-05-18 | 14d? | 40d | 0d |  |  |  |
| 96 | 1.6.1 | **Infrastructure** | 1d? | 2006-04-04 | 2006-04-04 |  |  |  | 2006-05-01 | 2006-05-01 | 1d? | 53d |  |  |  |  |
| 97 | 1.6.1.1 | asdf | 1d? | 2006-04-04 | 2006-04-04 |  |  |  | 2006-05-01 | 2006-05-01 | 1d? | 53d |  |  |  |  |
| 98 | 1.6.2 | **Federated Identity Management Solution** | 1d? | 2006-04-04 | 2006-04-04 |  |  |  | 2006-05-01 | 2006-05-01 | 1d? | 53d |  |  |  |  |
| 99 | 1.6.2.1 | asdf | 1d? | 2006-04-04 | 2006-04-04 |  |  |  | 2006-05-01 | 2006-05-01 | 1d? | 53d |  |  |  |  |
| 100 | 1.6.3 | **Federated Authorization Solution** | 1d? | 2006-04-04 | 2006-04-04 |  |  |  | 2006-05-01 | 2006-05-01 | 1d? | 53d |  |  |  |  |
| 101 | 1.6.3.1 | asdf | 1d? | 2006-04-04 | 2006-04-04 |  |  |  | 2006-05-01 | 2006-05-01 | 1d? | 53d |  |  |  |  |
| 102 | 1.6.4 | **Introduce Toolkit** | 7d? | 2006-04-04 | 2006-04-12 |  |  |  | 2006-05-01 | 2006-05-09 | 7d? | 47d |  |  |  |  |
| 103 | 1.6.4.1 | Support for Co-Existence of Generated and Existing Classes | 5d? | 2006-04-04 | 2006-04-10 |  |  |  | 2006-05-01 | 2006-05-05 | 5d? | 49d |  |  |  |  |
| 104 | 1.6.4.2 | caDSR Integration for Data Type Selection | 5d? | 2006-04-04 | 2006-04-10 | 88 |  |  | 2006-05-01 | 2006-05-05 | 5d? | 49d |  |  |  |  |
| 105 | 1.6.4.3 | Integrate Security Configuration | 7d? | 2006-04-04 | 2006-04-12 |  |  |  | 2006-05-01 | 2006-05-09 | 7d? | 47d |  |  |  |  |
| 106 | 1.6.4.4 | User's Guide Documentation | 7d? | 2006-04-04 | 2006-04-12 |  |  |  | 2006-05-01 | 2006-05-09 | 7d? | 47d |  |  |  |  |

| ID | WBS | Task | Type | Duration | Start | Finish | Predecessors | Baseline start | Baseline finish | Baseline duration | Total slack | Free slack |
| --- | --- | --- | --- | --- | --- | --- | --- | --- | --- | --- | --- | --- |
| 107 | 1.6.5 | **Analytical Services** |  | 10d? | 2006-04-04 | 2006-04-17 |  | 2006-05-01 | 2006-05-12 | 10d? | 44d |  |
| 108 | 1.6.5.1 | asdf |  | 10d? | 2006-04-04 | 2006-04-17 |  | 2006-05-01 | 2006-05-12 | 10d? | 44d |  |
| 109 | 1.6.6 | **Metadata Framework** |  | 14d? | 2006-04-04 | 2006-04-21 |  | 2006-05-01 | 2006-05-18 | 14d? | 40d |  |
| 110 | 1.6.6.1 | Develop Simpler, Specialized Graphical Client for GME? |  | 6d? | 2006-04-04 | 2006-04-11 |  | 2006-05-01 | 2006-05-08 | 6d? | 48d |  |
| 111 | 1.6.6.2 | Finalize Metadata Standards with VCDE Collaboration |  | 4d? | 2006-04-04 | 2006-04-07 |  | 2006-05-01 | 2006-05-04 | 4d? | 40d | 0d |
| 112 | 1.6.6.3 | Implement Discovery API |  | 10d | 2006-04-10 | 2006-04-21 | 111 | 2006-05-05 | 2006-05-18 | 10d | 40d |  |
| 113 | 1.6.6.4 | Document Metadata Infrastructure |  | 10d? | 2006-04-04 | 2006-04-17 |  | 2006-05-01 | 2006-05-12 | 10d? | 44d |  |
| 114 | 1.6.7 | **Deployment / Installation** |  | 1d? | 2006-04-04 | 2006-04-04 |  | 2006-05-01 | 2006-05-01 | 1d? | 53d |  |
| 115 | 1.6.7.1 | Document Installation and Deployment Process |  | 1d? | 2006-04-04 | 2006-04-04 |  | 2006-05-01 | 2006-05-01 | 1d? | 53d |  |
| 116 | 1.7 | **Fourth Iteration (prior to Feature Freeze)** |  | 1d? | 2006-04-21 | 2006-04-24 | 95 |  |  |  | 84d | 0d |
| 117 | 1.7.1 | **Infrastructure** |  | 0d | 2006-04-21 | 2006-04-21 |  | 2006-08-01 | 2006-08-01 | 0d | 85d |  |
| 118 | 1.7.1.1 | asdf | milestone | 0d | 2006-04-21 | 2006-04-21 |  | 2006-08-01 | 2006-08-01 | 0d | 85d |  |
| 119 | 1.7.2 | **Federated Identity Management Solution** |  | 0d | 2006-04-21 | 2006-04-21 |  | 2006-08-01 | 2006-08-01 | 0d | 85d |  |
| 120 | 1.7.2.1 | asdf | milestone | 0d | 2006-04-21 | 2006-04-21 |  | 2006-08-01 | 2006-08-01 | 0d | 85d |  |
| 121 | 1.7.3 | **Federated Authorization Solution** |  | 1d? | 2006-04-24 | 2006-04-24 |  | 2006-08-01 | 2006-08-01 | 1d? | 84d |  |
| 122 | 1.7.3.1 | asdf |  | 1d? | 2006-04-24 | 2006-04-24 |  | 2006-08-01 | 2006-08-01 | 1d? | 84d |  |
| 123 | 1.7.4 | **Introduce Toolkit** |  | 0d? | 2006-04-21 | 2006-04-21 |  | 2006-08-01 | 2006-08-01 | 0d? | 85d |  |
| 124 | 1.7.4.1 | Explicit Support for Stateful Services | milestone | 0d? | 2006-04-21 | 2006-04-21 |  | 2006-08-01 | 2006-08-01 | 0d? | 85d |  |
| 125 | 1.7.5 | **Analytical Services** |  | 1d? | 2006-04-24 | 2006-04-24 |  | 2006-08-01 | 2006-08-01 | 1d? | 84d |  |
| 126 | 1.7.5.1 | asdf |  | 1d? | 2006-04-24 | 2006-04-24 |  | 2006-08-01 | 2006-08-01 | 1d? | 84d |  |
| 127 | 1.7.6 | **Metadata Framework** |  | 0d | 2006-04-21 | 2006-04-21 |  | 2006-08-01 | 2006-08-01 | 0d | 85d |  |
| 128 | 1.7.6.1 | asdf | milestone | 0d | 2006-04-21 | 2006-04-21 |  | 2006-08-01 | 2006-08-01 | 0d | 85d |  |
| 129 | 1.7.7 | **Deployment / Installation** |  | 0d | 2006-04-21 | 2006-04-21 |  | 2006-08-01 | 2006-08-01 | 0d | 85d |  |
| 130 | 1.7.7.1 | asdf | milestone | 0d | 2006-04-21 | 2006-04-21 |  | 2006-08-01 | 2006-08-01 | 0d | 85d |  |

| ID | WBS | Task | Type | Duration | Start | Finish | Predecessors | Baseline start | Baseline finish | Baseline duration | Total slack | Free slack |
| --- | --- | --- | --- | --- | --- | --- | --- | --- | --- | --- | --- | --- |
| 131 | 1.8 | **Fifth Iteration (prior to Release)** |  | 7d? | 2006-04-24 | 2006-05-03 | 116 |  |  |  | 122d | 0d |
| 132 | 1.8.1 | **Infrastructure** |  | 0d | 2006-04-24 | 2006-04-24 |  | 2006-08-01 | 2006-08-01 | 0d | 129d |  |
| 133 | 1.8.1.1 | asdf | milestone | 0d | 2006-04-24 | 2006-04-24 |  | 2006-08-01 | 2006-08-01 | 0d | 129d |  |
| 134 | 1.8.2 | **Federated Identity Management Solution** |  | 0d | 2006-04-24 | 2006-04-24 |  | 2006-08-01 | 2006-08-01 | 0d | 129d |  |
| 135 | 1.8.2.1 | asdf | milestone | 0d | 2006-04-24 | 2006-04-24 |  | 2006-08-01 | 2006-08-01 | 0d | 129d |  |
| 136 | 1.8.3 | **Federated Authorization Solution** |  | 1d? | 2006-04-25 | 2006-04-25 |  | 2006-08-01 | 2006-08-01 | 1d? | 128d |  |
| 137 | 1.8.3.1 | asdf |  | 1d? | 2006-04-25 | 2006-04-25 |  | 2006-08-01 | 2006-08-01 | 1d? | 128d |  |
| 138 | 1.8.4 | **Introduce Toolkit** |  | 0d? | 2006-04-24 | 2006-04-24 |  | 2006-08-01 | 2006-08-01 | 0d? | 129d |  |
| 139 | 1.8.4.1 | Explicit Support for Stateful Services | milestone | 0d? | 2006-04-24 | 2006-04-24 |  | 2006-08-01 | 2006-08-01 | 0d? | 129d |  |
| 140 | 1.8.5 | **Analytical Services** |  | 7d? | 2006-04-25 | 2006-05-03 |  | 2006-08-01 | 2006-08-01 | 1d? | 122d |  |
| 141 | 1.8.5.1 | Investigation of HPC Requirements |  | 5d | 2006-04-25 | 2006-05-01 |  | 2006-02-01 | 2006-02-07 | 5d | 124d |  |
| 142 | 1.8.5.2 | Example GRAM Service |  | 5d | 2006-04-25 | 2006-05-01 |  | 2006-02-01 | 2006-02-07 | 5d | 124d |  |
| 143 | 1.8.5.3 | Design for Non-Java Services |  | 5d | 2006-04-25 | 2006-05-01 |  | 2006-02-01 | 2006-02-07 | 5d | 124d |  |
| 144 | 1.8.5.4 | Document Analytical Service Specification |  | 7d? | 2006-04-25 | 2006-05-03 |  | 2006-08-01 | 2006-08-01 | 1d? | 122d |  |
| 145 | 1.8.6 | **Metadata Framework** |  | 0d | 2006-04-24 | 2006-04-24 |  | 2006-08-01 | 2006-08-01 | 0d | 129d |  |
| 146 | 1.8.6.1 | asdf | milestone | 0d | 2006-04-24 | 2006-04-24 |  | 2006-08-01 | 2006-08-01 | 0d | 129d |  |
| 147 | 1.8.7 | **Deployment / Installation** |  | 0d | 2006-04-24 | 2006-04-24 |  | 2006-08-01 | 2006-08-01 | 0d | 129d |  |
| 148 | 1.8.7.1 | asdf | milestone | 0d | 2006-04-24 | 2006-04-24 |  | 2006-08-01 | 2006-08-01 | 0d | 129d |  |
| 149 | 1.9 | **Future Work (out of scope for Release)** |  | 1d? | 2006-05-03 | 2006-05-04 | 131 | 2006-08-01 | 2006-08-01 | 1d? | 122d |  |
| 150 | 1.9.1 | **Infrastructure** |  | 0d | 2006-05-03 | 2006-05-03 |  | 2006-08-01 | 2006-08-01 | 0d | 123d |  |
| 151 | 1.9.1.1 | asdf | milestone | 0d | 2006-05-03 | 2006-05-03 |  | 2006-08-01 | 2006-08-01 | 0d | 123d |  |
| 152 | 1.9.2 | **Federated Identity Management Solution** |  | 0d | 2006-05-03 | 2006-05-03 |  | 2006-08-01 | 2006-08-01 | 0d | 123d |  |
| 153 | 1.9.2.1 | asdf | milestone | 0d | 2006-05-03 | 2006-05-03 |  | 2006-08-01 | 2006-08-01 | 0d | 123d |  |
| 154 | 1.9.3 | **Federated Authorization Solution** |  | 1d? | 2006-05-04 | 2006-05-04 |  | 2006-08-01 | 2006-08-01 | 1d? | 122d |  |
| 155 | 1.9.3.1 | asdf |  | 1d? | 2006-05-04 | 2006-05-04 |  | 2006-08-01 | 2006-08-01 | 1d? | 122d |  |

| ID | WBS | Task | Type | Duration | Start | Finish | Predecessors | Baseline start | Baseline finish | Baseline duration | Total slack | Constraint |
| --- | --- | --- | --- | --- | --- | --- | --- | --- | --- | --- | --- | --- |
| 156 | 1.9.4 | **Introduce Toolkit** |  | 0d? | 2006-05-03 | 2006-05-03 |  | 2006-08-01 | 2006-08-01 | 0d? | 123d |  |
| 157 | 1.9.4.1 | Explicit Support for Stateful Services | milestone | 0d? | 2006-05-03 | 2006-05-03 |  | 2006-08-01 | 2006-08-01 | 0d? | 123d |  |
| 158 | 1.9.5 | **Analytical Services** |  | 1d? | 2006-05-04 | 2006-05-04 |  | 2006-08-01 | 2006-08-01 | 1d? | 122d |  |
| 159 | 1.9.5.1 | asdf |  | 1d? | 2006-05-04 | 2006-05-04 |  | 2006-08-01 | 2006-08-01 | 1d? | 122d |  |
| 160 | 1.9.6 | **Metadata Framework** |  | 0d | 2006-05-03 | 2006-05-03 |  | 2006-08-01 | 2006-08-01 | 0d | 123d |  |
| 161 | 1.9.6.1 | asdf | milestone | 0d | 2006-05-03 | 2006-05-03 |  | 2006-08-01 | 2006-08-01 | 0d | 123d |  |
| 162 | 1.9.7 | **Deployment / Installation** |  | 0d | 2006-05-03 | 2006-05-03 |  | 2006-08-01 | 2006-08-01 | 0d | 123d |  |
| 163 | 1.9.7.1 | asdf | milestone | 0d | 2006-05-03 | 2006-05-03 |  | 2006-08-01 | 2006-08-01 | 0d | 123d |  |
| 164 | 1.10 | **High-Level Milestones** |  | 188d | 2006-02-01 | 2006-10-23 |  |  |  |  | 0d |  |
| 165 | 1.10.1 | Arch/VCDE Face to Face Meeting | milestone | 0d | 2006-02-01 | 2006-02-01 |  |  |  |  | 0d | must finish on 2006-02-01 |
| 166 | 1.10.2 | Annual Meeting (Infrastructure Freeze) | milestone | 0d | 2006-04-03 | 2006-04-03 | 42 |  |  |  | 0d | must finish on 2006-04-03 |
| 167 | 1.10.3 | Annual Meeting/Demo | milestone | 0d | 2006-04-10 | 2006-04-10 |  |  |  |  | 0d | must finish on 2006-04-10 |
| 168 | 1.10.4 | caGrid 1.0 Beta (Public API Freeze) | milestone | 0d | 2006-06-16 | 2006-06-16 | 95 |  |  |  | 0d | must finish on 2006-06-16 |
| 169 | 1.10.5 | caGrid 1.0 Feature Freeze | milestone | 0d | 2006-08-18 | 2006-08-18 | 116 |  |  |  | 0d | must finish on 2006-08-18 |
| 170 | 1.10.6 | caGrid 1.0 Release | milestone | 0d | 2006-10-23 | 2006-10-23 | 131 |  |  |  | 0d | must finish on 2006-10-23 |
