# caGrid_Portal-2-1

Schedule from MS Project, 2008-07-31 to 2008-10-01, A marks actual dates.
Personal

## Calendars

- Standard: Mon-Fri 08:00-12:00, 13:00-17:00; Sat-Sun off.

## Resources

| Resource |
| --- |
| Manav Kher |
| Joshua Phillips |
| Carolyln Klinger |
| John Eisenschmidt |
| Quality Assurance |
| Systems |

## Schedule

| ID | WBS | Task | Type | Duration | Start | Finish | Predecessors | Complete | Remaining | Total slack | Free slack | Resources | Work | Actual work |
| --- | --- | --- | --- | --- | --- | --- | --- | --- | --- | --- | --- | --- | --- | --- |
| 1 | 1.0 | **caGrid Portal 2.0.3** |  | 40.55d | 2008-07-31 A | 2008-09-25 |  | 59% | 16.65d | 3.5d |  |  | 454.8h | 261h |
| 2 | 1.1 | Start | milestone | 0d | 2008-07-31 A | 2008-07-31 A |  | 100% |  |  |  |  |  |  |
| 3 | 1.2 | **Bug Fixes** |  | 5d | 2008-07-31 A | 2008-08-06 | 2 | 99% | 0d | 27.8d |  |  | 79.2h | 79.2h |
| 4 | 1.2.1 | Start | milestone | 0d | 2008-07-31 A | 2008-07-31 A |  | 100% |  |  |  |  |  |  |
| 5 | 1.2.2 | RuntimeException thrown in Portal 2.0.2 |  | 5d | 2008-07-31 A | 2008-08-06 A | 4 | 100% |  |  |  | Manav Kher [90%] | 36h | 36h |
| 6 | 1.2.3 | Problem with RFE 12079 implementation for Portal |  | 5d | 2008-07-31 A | 2008-08-06 A | 4 | 100% |  |  |  | Manav Kher [90%] | 36h | 36h |
| 7 | 1.2.4 | Portal is overloading GME service |  | 1d | 2008-07-31 A | 2008-07-31 A | 4 | 100% |  |  |  | Manav Kher [90%] | 7.2h | 7.2h |
| 8 | 1.2.5 | Finish | milestone | 0d | 2008-08-06 | 2008-08-06 | 5, 7, 6 |  |  | 27.8d |  |  |  |  |
| 9 | 1.3 | **Enhancements** |  | 32.8d | 2008-07-31 A | 2008-09-15 | 2 | 72% | 9.14d | 0d |  |  | 252h | 181.8h |
| 10 | 1.3.1 | Start | milestone | 0d | 2008-07-31 A | 2008-07-31 A |  | 100% |  |  |  |  |  |  |
| 11 | 1.3.2 | User developed Portlets |  | 12d | 2008-07-31 A | 2008-08-22 | 10 | 50% | 6d | 16.3d |  | Manav Kher [90%] | 86.4h | 43.2h |
| 12 | 1.3.3 | Discovery Results should show reasearch center information |  | 1d | 2008-07-31 A | 2008-07-31 A | 10 | 100% |  |  |  | Manav Kher [90%] | 7.2h | 7.2h |
| 13 | 1.3.4 | Admin UI for Banning/Unbanning |  | 5d | 2008-07-31 A | 2008-08-06 A | 10 | 100% |  |  |  | Manav Kher [90%] | 36h | 36h |
| 14 | 1.3.5 | Service Diagnostic Portlet |  | 15d | 2008-07-31 A | 2008-09-11 | 10 | 75% | 3.75d | 2d |  | Manav Kher [90%] | 108h | 81h |
| 15 | 1.3.6 | Aggregation Performance Enhancements Design |  | 2d | 2008-09-11 A | 2008-09-15 A | 14 | 100% |  |  |  | Manav Kher [90%] | 14.4h | 14.4h |
| 16 | 1.3.7 | Finish | milestone | 0d | 2008-09-15 | 2008-09-15 | 11, 12, 13, 15, 14 |  |  | 0d |  |  |  |  |
| 17 | 1.4 | **Documentation** |  | 6.2d | 2008-09-15 | 2008-09-23 |  |  |  | 5.05d |  |  | 54h |  |
| 18 | 1.4.1 | Start | milestone | 0d | 2008-09-15 | 2008-09-15 | 8, 16 |  |  | 5.75d | 0d |  |  |  |
| 19 | 1.4.2 | Documentation for User-developed Portlets |  | 2d | 2008-09-22 | 2008-09-23 | 18 |  |  | 5.05d | 0d | Manav Kher [90%] | 14.4h |  |
| 20 | 1.4.3 | Update Admin Guide |  | 1.5d | 2008-09-15 | 2008-09-17 | 18 |  |  | 9.75d | 4.7d | Carolyln Klinger | 12h |  |
| 21 | 1.4.4 | Update Install Guide |  | 1.5d | 2008-09-15 | 2008-09-18 | 18 |  |  | 8.45d | 3.4d | Carolyln Klinger | 12h |  |
| 22 | 1.4.5 | Update User Guide |  | 1.5d | 2008-09-15 | 2008-09-19 | 18 |  |  | 7.15d | 2.1d | Carolyln Klinger | 12h |  |
| 23 | 1.4.6 | Release Notes |  | 0.5d | 2008-09-22 | 2008-09-23 | 18 |  |  | 5.75d | 0.7d | Manav Kher [90%] | 3.6h |  |
| 24 | 1.4.7 | Finish | milestone | 0d | 2008-09-23 | 2008-09-23 | 20, 21, 22, 23, 19 |  |  | 5.05d |  |  |  |  |

| ID | WBS | Task | Type | Duration | Start | Finish | Predecessors | Total slack | Free slack | Constraint | Resources | Work |
| --- | --- | --- | --- | --- | --- | --- | --- | --- | --- | --- | --- | --- |
| 25 | 1.5 | **QA** |  | 2.5d | 2008-09-15 | 2008-09-18 | 2 | 0d |  |  |  | 18h |
| 26 | 1.5.1 | Start | milestone | 0d | 2008-09-15 | 2008-09-15 | 8, 16 | 0d |  |  |  |  |
| 27 | 1.5.2 | Support QA during testing |  | 2.5d | 2008-09-15 | 2008-09-18 | 26 | 0d |  |  | Manav Kher [90%] | 18h |
| 28 | 1.5.3 | Finish | milestone | 0d | 2008-09-18 | 2008-09-18 | 27 | 0d |  |  |  |  |
| 29 | 1.6 | **Deployment** |  | 5.25d | 2008-09-18 | 2008-09-25 | 2 | 0d |  |  |  | 51.6h |
| 30 | 1.6.1 | Start | milestone | 0d | 2008-09-18 | 2008-09-18 | 28 | 0d |  |  |  |  |
| 31 | 1.6.2 | Stage |  | 1d | 2008-09-18 | 2008-09-19 | 30 | 0d |  |  | Systems | 8h |
| 32 | 1.6.3 | App Scan |  | 3d | 2008-09-19 | 2008-09-24 | 31 | 0d |  |  | Systems | 24h |
| 33 | 1.6.4 | Production |  | 1d | 2008-09-24 | 2008-09-25 | 32 | 0d |  |  | Systems | 8h |
| 34 | 1.6.5 | Update Plome |  | 0.25d | 2008-09-18 | 2008-09-18 | 30 | 8.5d |  |  | John Eisenschmidt | 2h |
| 35 | 1.6.6 | Update gforge |  | 0.5d | 2008-09-18 | 2008-09-18 | 30 | 8.25d |  |  | John Eisenschmidt; Manav Kher [90%] | 7.6h |
| 36 | 1.6.7 | Send Release Announcement |  | 0.25d | 2008-09-25 | 2008-09-25 | 33 | 0d |  |  | John Eisenschmidt | 2h |
| 37 | 1.6.5 | Finish | milestone | 0d | 2008-09-25 | 2008-09-25 | 36 | 0d |  |  |  |  |
| 38 | 1.7 | Finish | milestone | 0d | 2008-09-25 | 2008-09-25 | 37 | 0d |  |  |  |  |
| 39 | 2.0 | **caGrid Portal 2.0.4** |  | 42.05d? | 2008-08-01 | 2008-10-01 |  | 0d |  |  |  | 21.6h |
| 40 | 2.2 | Start | milestone | 0d | 2008-09-25 | 2008-09-25 | 38 | 0d |  | start no earlier than 2008-07-31 |  |  |
| 41 | 2.3 | **Bug Fixes** |  | 0d | 2008-09-25 | 2008-09-25 |  | 1d |  |  |  |  |
| 42 | 2.3.1 | Start | milestone | 0d | 2008-09-25 | 2008-09-25 | 40 | 1d | 0d |  |  |  |
| 43 | 2.3.2 | Finish | milestone | 0d | 2008-09-25 | 2008-09-25 | 42 | 1d |  |  |  |  |
| 44 | 2.4 | **Enhancements** |  | 1d? | 2008-09-25 | 2008-09-26 |  | 0d |  |  |  | 21.6h |
| 45 | 2.4.1 | Start | milestone | 0d | 2008-09-25 | 2008-09-25 | 40 | 0d |  |  |  |  |
| 46 | 2.4.2 | GAARDS UI Integration |  | 1d? | 2008-09-25 | 2008-09-26 | 45 | 0d |  |  |  |  |
| 47 | 2.4.3 | Federated Query Builder Enhancements |  | 1d? | 2008-09-25 | 2008-09-26 | 45 | 0d |  |  |  |  |
| 48 | 2.4.4 | Shared Query Enhancements |  | 1d? | 2008-09-25 | 2008-09-26 | 45 | 0d |  |  |  |  |
| 49 | 2.4.5 | Notification Framework |  | 1d? | 2008-09-25 | 2008-09-26 | 45 | 0d |  |  |  |  |
| 50 | 2.4.6 | Provide RSS feed for newly discovered services |  | 1d? | 2008-09-25 | 2008-09-26 | 45 | 0d |  |  |  |  |
| 51 | 2.4.7 | Support Parameterized Queries |  | 1d? | 2008-09-25 | 2008-09-26 | 45 | 0d |  |  |  |  |
| 52 | 2.4.8 | address xss issues in portal input fields |  | 1d? | 2008-09-25 | 2008-09-26 | 45 | 0d |  |  |  |  |
| 53 | 2.4.9 | Portal needs participant admin UI |  | 1d? | 2008-09-25 | 2008-09-26 | 45 | 0d |  |  | Manav Kher [90%] | 7.2h |
| 54 | 2.4.10 | Provide interface to make participant information update requests. |  | 1d? | 2008-09-25 | 2008-09-26 | 45 | 0d |  |  | Manav Kher [90%] | 7.2h |
| 55 | 2.4.11 | Portal EVS autocompleter should allow user to select where in the metadata the match shold occur. |  | 1d? | 2008-09-25 | 2008-09-26 | 45 | 0d |  |  | Manav Kher [90%] | 7.2h |
| 56 | 2.4.12 | Finish | milestone | 0d | 2008-09-26 | 2008-09-26 | 46, 47, 48, 49, 50, 51, 52, 53, 54, 55 | 0d |  |  |  |  |

| ID | WBS | Task | Type | Duration | Start | Finish | Predecessors | Total slack | Free slack | Constraint |
| --- | --- | --- | --- | --- | --- | --- | --- | --- | --- | --- |
| 57 | 2.5 | **Documentation** |  | 1d? | 2008-09-26 | 2008-09-29 |  | 1.5d |  |  |
| 58 | 2.5.1 | Start | milestone | 0d | 2008-09-26 | 2008-09-26 | 43, 56 | 1.5d | 0d | start no earlier than 2008-07-31 |
| 59 | 2.5.2 | Update Admin Guide |  | 1d? | 2008-09-26 | 2008-09-29 | 58 | 1.5d | 0d | start no earlier than 2008-08-01 |
| 60 | 2.5.3 | Update Install Guide |  | 1d? | 2008-09-26 | 2008-09-29 | 58 | 1.5d | 0d | start no earlier than 2008-08-01 |
| 61 | 2.5.4 | Update User Guide |  | 1d? | 2008-09-26 | 2008-09-29 | 58 | 1.5d | 0d | start no earlier than 2008-08-01 |
| 62 | 2.5.5 | Release Notes |  | 1d? | 2008-09-26 | 2008-09-29 | 58 | 1.5d | 0d | start no earlier than 2008-08-01 |
| 63 | 2.5.6 | Finish | milestone | 0d | 2008-09-29 | 2008-09-29 | 59, 60, 61, 62 | 1.5d |  | start no earlier than 2008-08-01 |
| 64 | 2.6 | **QA** |  | 2.5d | 2008-09-26 | 2008-10-01 |  | 0d |  |  |
| 65 | 2.6.1 | Start | milestone | 0d | 2008-09-26 | 2008-09-26 | 43, 56 | 0d |  | start no earlier than 2008-07-31 |
| 66 | 2.6.2 | Support QA during testing |  | 2.5d | 2008-09-26 | 2008-10-01 | 65 | 0d |  | start no earlier than 2008-08-01 |
| 67 | 2.6.3 | Finish | milestone | 0d | 2008-10-01 | 2008-10-01 | 66 | 0d |  | start no earlier than 2008-08-01 |
| 68 | 2.7 | **Deployment** |  | 5.25d | 2008-08-01 | 2008-08-11 |  | 36.8d |  |  |
| 69 | 2.7.1 | Start | milestone | 0d | 2008-08-01 | 2008-08-01 |  | 36.8d | 0d | start no earlier than 2008-08-01 |
| 70 | 2.7.2 | Stage |  | 1d | 2008-08-04 | 2008-08-04 | 69 | 36.8d | 0d | start no earlier than 2008-08-04 |
| 71 | 2.7.3 | App Scan |  | 3d | 2008-08-05 | 2008-08-07 | 70 | 36.8d | 0d | start no earlier than 2008-08-05 |
| 72 | 2.7.4 | Production |  | 1d | 2008-08-08 | 2008-08-08 | 71 | 36.8d | 0d | start no earlier than 2008-08-06 |
| 73 | 2.7.5 | Update Plome |  | 0.25d | 2008-08-04 | 2008-08-04 | 69 | 41.8d |  | start no earlier than 2008-08-04 |
| 74 | 2.7.6 | Update gforge |  | 0.5d | 2008-08-04 | 2008-08-04 | 69 | 41.55d |  | start no earlier than 2008-08-04 |
| 75 | 2.7.7 | Send Release Announcement |  | 0.25d | 2008-08-11 | 2008-08-11 | 72 | 36.8d | 0d | start no earlier than 2008-08-07 |
| 76 | 2.7.8 | Finish | milestone | 0d | 2008-08-11 | 2008-08-11 | 75 | 36.8d | 0d | start no earlier than 2008-08-07 |
| 77 | 2.8 | Finish | milestone | 0d | 2008-08-11 | 2008-08-11 | 76 | 36.8d |  | start no earlier than 2008-08-07 |
